Schedule from MS Project, 2013-03-22 to 2014-02-24, costs in €.

## Calendars

- Estándar: Mon-Fri 09:00-13:00, 15:00-19:00; Sat-Sun off.

## Resources

| Resource | Rate |
| --- | --- |
| DIRECTOR PROYECTO | 60 |
| INGENIERO AGRONOMO | 48 |
| EXPERTO GIS | 47 |
| ECONOMISTA | 45 |
| SOCIOLOGO | 45 |
| INGENIERO EN MEDIOAMBIENTE | 45 |
| ADMINISTRATIVO | 30 |
| TECNICOS DE APOYO | 35 |
| SOCIÓLOGO |  |
| INGENIERO AGRÓNOMO |  |
| EXPERTO EN GIS |  |

## Schedule

| ID | WBS | Task | Type | Duration | Start | Finish | Predecessors | Total slack | Free slack | Resources | Work | Cost |
| --- | --- | --- | --- | --- | --- | --- | --- | --- | --- | --- | --- | --- |
| 1 | 1 | **TOTAL PROYECTO** |  | 242d | 2013-03-22 | 2014-02-24 |  | 0d |  |  | 7508h | 265,626.8 |
| 2 | 1.1 | **FASE 1: PREPARACION PARA LA FORMULACION** |  | 31d | 2013-03-22 | 2013-05-03 |  | 0d |  |  | 808.4h | 34,246 |
| 3 | 1.1.1 | INICIO | milestone | 0d | 2013-03-22 | 2013-03-22 |  | 0d |  | DIRECTOR PROYECTO |  |  |
| 4 | 1.1.2 | TERMINOS DE REFERENCIA. Objetivos. Condicionantes del Promotor |  | 10d | 2013-03-22 | 2013-04-04 | 3 | 5d |  | DIRECTOR PROYECTO [25%]; INGENIERO AGRONOMO [25%]; SOCIOLOGO [25%]; INGENIERO EN MEDIOAMBIENTE [25%]; ECONOMISTA [50%]; TECNICOS DE APOYO | 200h | 8,560 |
| 5 | 1.1.3 | FINANCIACION |  | 7d | 2013-03-22 | 2013-04-01 | 3 | 8d |  | DIRECTOR PROYECTO [15%]; INGENIERO AGRONOMO [25%]; ECONOMISTA [50%]; SOCIOLOGO [25%] | 64.4h | 3,066 |
| 6 | 1.1.4 | COMITÉ DE COORDINACION. Constitución y organización |  | 5d | 2013-03-22 | 2013-03-28 | 3 | 0d |  | DIRECTOR PROYECTO [25%] | 10h | 600 |
| 7 | 1.1.5 | EQUIPO DE FORMULACION. Recursos humanos y técnicos |  | 15d | 2013-03-29 | 2013-04-18 | 4SS, 6 | 0d |  | DIRECTOR PROYECTO [25%]; ECONOMISTA [20%]; SOCIOLOGO [10%]; INGENIERO EN MEDIOAMBIENTE [10%]; INGENIERO AGRONOMO [10%]; ADMINISTRATIVO [10%] | 102h | 4,896 |
| 8 | 1.1.6 | METODOLOGIA Y PLAN DE TRABAJO |  | 10d | 2013-04-12 | 2013-04-25 | 7FS-5d, 5, 4, 6SS | 0d |  | INGENIERO AGRONOMO [50%]; DIRECTOR PROYECTO [50%]; ECONOMISTA; SOCIÓLOGO [50%]; INGENIERO EN MEDIOAMBIENTE [50%]; ADMINISTRATIVO [50%] | 280h | 10,920 |
| 9 | 1.1.7 | DOC. Nº1: Fin P.F. |  | 5d | 2013-04-26 | 2013-05-02 | 8 | 0d |  | DIRECTOR PROYECTO [50%]; ECONOMISTA [50%]; SOCIOLOGO [20%]; INGENIERO EN MEDIOAMBIENTE [20%]; INGENIERO AGRONOMO [20%]; ADMINISTRATIVO | 104h | 4,404 |
| 10 | 1.1.8 | Entrega al PROMOTOR. Doc. nº1 | milestone | 0d | 2013-05-02 | 2013-05-02 | 9 | 0d |  | DIRECTOR PROYECTO [50%] |  |  |
| 11 | 1.1.9 | SEMINARIO DE LANZAMIENTO DEL PROYECTO |  | 1d | 2013-05-03 | 2013-05-03 | 10 | 0d |  | DIRECTOR PROYECTO; ECONOMISTA; SOCIOLOGO; INGENIERO EN MEDIOAMBIENTE; INGENIERO AGRÓNOMO; ADMINISTRATIVO | 48h | 1,800 |
| 12 | 1.2 | **FASE 2: ANALISIS Y DIAGNOSTICO** |  | 94d | 2013-05-06 | 2013-09-12 |  | 0d |  |  | 3962h | 113,728.8 |
| 13 | 1.2.1 | **ANALISIS ANTECEDENTES** |  | 15d | 2013-05-06 | 2013-05-24 | 11 | 0d |  |  | 315.2h | 14,088 |
| 14 | 1.2.1.1 | POLITICAS Y PROGRAMAS |  | 10d | 2013-05-06 | 2013-05-17 | 11 | 176d | 52d | DIRECTOR PROYECTO [20%]; INGENIERO AGRONOMO [50%]; ECONOMISTA [40%]; ADMINISTRATIVO [20%]; INGENIERO EN MEDIOAMBIENTE [20%] | 120h | 5,520 |
| 15 | 1.2.1.2 | MARCO LEGAL |  | 15d | 2013-05-06 | 2013-05-24 | 11 | 171d | 47d | DIRECTOR PROYECTO [20%]; INGENIERO AGRONOMO [20%]; ADMINISTRATIVO [50%]; ECONOMISTA [40%] | 156h | 6,552 |
| 16 | 1.2.1.3 | BASES DE DATOS EXISTENTES |  | 7d | 2013-05-06 | 2013-05-14 | 11 | 0d |  | DIRECTOR PROYECTO [20%]; INGENIERO AGRONOMO [50%] | 39.2h | 2,016 |
| 17 | 1.2.2 | **ANALISIS DEL AREA DEL PROYECTO** |  | 80d | 2013-05-15 | 2013-09-03 | 11, 16 | 0d |  |  | 2124h | 53,796 |
| 18 | 1.2.2.1 | ANALISIS DE RECURSOS NATURALES. INVENTARIO AMBIENTAL |  | 35d | 2013-05-15 | 2013-07-02 |  | 124d | 0d | INGENIERO EN MEDIOAMBIENTE; INGENIERO AGRONOMO [50%]; ECONOMISTA [40%]; ADMINISTRATIVO [20%]; EXPERTO EN GIS [50%] | 728h | 26,040 |
| 19 | 1.2.2.2 | INFRAESTRUCTURAS Y SERVICIOS |  | 20d | 2013-07-03 | 2013-07-30 | 18 | 124d | 0d | INGENIERO AGRÓNOMO; SOCIÓLOGO [50%]; DIRECTOR PROYECTO [10%]; ADMINISTRATIVO [25%] | 296h | 2,160 |
| 20 | 1.2.2.3 | ANALISIS DE SECTORES PRODUCTIVOS |  | 25d | 2013-07-31 | 2013-09-03 | 14, 15, 19 | 124d |  | DIRECTOR PROYECTO [20%]; ECONOMISTA; INGENIERO AGRONOMO [50%]; ADMINISTRATIVO [50%] | 440h | 19,200 |
| 21 | 1.2.2.4 | ANALISIS POBLACIONAL |  | 20d | 2013-05-15 | 2013-06-11 |  | 184d |  | SOCIÓLOGO; INGENIERO AGRONOMO [25%]; ADMINISTRATIVO [25%] | 240h | 3,120 |
| 22 | 1.2.2.5 | SISTEMA GENERAL TERRITORIAL DE INFORMACION |  | 21d | 2013-05-15 | 2013-06-12 | 16 | 0d |  | SOCIÓLOGO; INGENIERO AGRONOMO [25%]; ADMINISTRATIVO [25%]; EXPERTO EN GIS | 420h | 3,276 |
| 23 | 1.2.3 | **ANALISIS DE AGENTES Y PARTICIPACION** |  | 82d | 2013-05-22 | 2013-09-12 |  | 0d |  |  | 1522.8h | 45,844.8 |
| 24 | 1.2.3.1 | IDENTIFICACIÓN DE AGENTES Y TIPOLOGIA |  | 10d | 2013-05-22 | 2013-06-04 | 22SS+5d | 0d |  | DIRECTOR PROYECTO [50%]; SOCIÓLOGO; INGENIERO AGRONOMO [50%]; ADMINISTRATIVO [25%] | 180h | 4,920 |
| 25 | 1.2.3.2 | ANALISIS DE LA PARTICIPACIÓN: ENCUESTA CON LOS AGENTES |  | 60d | 2013-06-05 | 2013-08-27 | 24 | 0d |  | DIRECTOR PROYECTO [50%]; SOCIÓLOGO; INGENIERO AGRONOMO [50%]; ADMINISTRATIVO [25%] | 1080h | 29,520 |
| 26 | 1.2.3.3 | TALLER DE PARTICIPACIÓN AGENTES PUBLICOS |  | 1d | 2013-06-19 | 2013-06-19 | 25SS+10d | 43d | 0d | SOCIÓLOGO; INGENIERO AGRONOMO [50%]; ADMINISTRATIVO [50%]; DIRECTOR PROYECTO [15%] | 17.2h | 384 |
| 27 | 1.2.3.4 | ANALISIS PROYECTIVO "SIN" |  | 6d | 2013-06-20 | 2013-06-27 | 26 | 43d |  | INGENIERO AGRONOMO [25%]; ECONOMISTA [50%]; SOCIOLOGO [25%]; INGENIERO EN MEDIOAMBIENTE [25%]; DIRECTOR PROYECTO [15%] | 67.2h | 3,168 |
| 28 | 1.2.3.5 | INFORME DE PARTICIPACION: Problemas, necesidades, oportunidades |  | 10d | 2013-08-28 | 2013-09-10 | 27, 25 | 0d |  | DIRECTOR PROYECTO [30%]; INGENIERO AGRONOMO [25%]; ECONOMISTA [50%]; SOCIOLOGO [25%]; INGENIERO EN MEDIOAMBIENTE [25%]; ADMINISTRATIVO [50%] | 164h | 7,200 |
| 29 | 1.2.3.6 | PRESENTACIÓN Y VALIDACION DE CONCLUSIONES |  | 2d | 2013-09-11 | 2013-09-12 | 28 | 0d |  | DIRECTOR PROYECTO [25%]; INGENIERO AGRONOMO [10%]; ECONOMISTA [20%]; SOCIOLOGO [10%]; ADMINISTRATIVO [25%] | 14.4h | 652.8 |
| 30 | 1.2.3.7 | CONCLUSIONES Y Doc. Nº2. Presentación al PROMOTOR | milestone | 0d | 2013-09-12 | 2013-09-12 | 29 | 0d |  | DIRECTOR PROYECTO [50%]; INGENIERO AGRONOMO [25%]; ADMINISTRATIVO; ECONOMISTA [50%]; INGENIERO EN MEDIOAMBIENTE [20%] |  |  |
| 31 | 1.2.3.8 | Doc. nº2. REVISIÓN POR EL PROMOTOR | milestone | 0d | 2013-09-12 | 2013-09-12 | 29, 30 | 0d |  |  |  |  |

| ID | WBS | Task | Type | Duration | Start | Finish | Predecessors | Total slack | Free slack | Resources | Work | Cost |
| --- | --- | --- | --- | --- | --- | --- | --- | --- | --- | --- | --- | --- |
| 32 | 1.3 | **FASE 3: DISEÑO DEL PROYECTO** |  | 92d | 2013-09-13 | 2014-01-20 |  | 0d |  |  | 1152h | 53,532 |
| 33 | 1.3.1 | OBJETIVOS Y METAS |  | 1d | 2013-09-13 | 2013-09-13 | 31 | 0d |  | DIRECTOR PROYECTO; INGENIERO AGRONOMO [50%] | 12h | 672 |
| 34 | 1.3.2 | ALTERNATIVA ESTRATEGICAS: ANÁLISIS Y SELECCIÓN |  | 7d | 2013-09-16 | 2013-09-24 | 33 | 0d |  | DIRECTOR PROYECTO [50%]; INGENIERO AGRONOMO; ECONOMISTA; INGENIERO EN MEDIOAMBIENTE [50%] | 168h | 8,148 |
| 35 | 1.3.3 | FORMULACION DE LOS COMPONENTES |  | 60d | 2013-09-25 | 2013-12-17 | 34 | 0d |  | INGENIERO AGRONOMO [50%]; ECONOMISTA [50%]; INGENIERO EN MEDIOAMBIENTE [50%] | 720h | 33,120 |
| 36 | 1.3.4 | DISEÑO DE LA ORGANIZACIÓN |  | 10d | 2013-12-18 | 2013-12-31 | 35 | 0d |  | INGENIERO AGRONOMO [50%]; ECONOMISTA [50%]; INGENIERO EN MEDIOAMBIENTE [50%] | 120h | 5,520 |
| 37 | 1.3.5 | SISTEMA DE SEGUIMIENTO Y EVALUACION. Programación de la ejecución |  | 7d | 2014-01-01 | 2014-01-09 | 36, 35 | 32d |  | INGENIERO AGRONOMO [50%]; ECONOMISTA [50%]; INGENIERO EN MEDIOAMBIENTE [50%] | 84h | 3,864 |
| 38 | 1.3.6 | PRESUPUESTACION |  | 4d | 2014-01-01 | 2014-01-06 | 35, 36 | 0d |  | INGENIERO AGRONOMO [50%]; ECONOMISTA [50%]; INGENIERO EN MEDIOAMBIENTE [50%] | 48h | 2,208 |
| 39 | 1.3.7 | Doc. Nº 3. Entrega al PROMOTOR | milestone | 0d | 2014-01-06 | 2014-01-06 | 38 | 0d |  | DIRECTOR PROYECTO |  |  |
| 40 | 1.3.8 | Doc. Nº 3. REVISION POR EL PROMOTOR |  | 10d | 2014-01-07 | 2014-01-20 | 39 | 0d |  |  |  |  |
| 41 | 1.4 | **FASE 4: EVALUACION MULTICRITERIO** |  | 15d | 2014-01-21 | 2014-02-10 |  | 0d |  |  | 596h | 27,700 |
| 42 | 1.4.1 | EVALUACION ECONOMICO-FINANCIERA |  | 10d | 2014-01-21 | 2014-02-03 | 40 | 0d |  | DIRECTOR PROYECTO [25%]; INGENIERO AGRONOMO [50%]; ECONOMISTA | 140h | 6,720 |
| 43 | 1.4.2 | EVALUACION SOCIAL Y CULTURAL |  | 10d | 2014-01-21 | 2014-02-03 | 40 | 0d |  | DIRECTOR PROYECTO [25%]; INGENIERO AGRONOMO [50%]; ECONOMISTA [15%]; SOCIOLOGO | 152h | 7,260 |
| 44 | 1.4.3 | EVALUACION AMBIENTAL |  | 10d | 2014-01-21 | 2014-02-03 | 40 | 0d |  | DIRECTOR PROYECTO [25%]; INGENIERO AGRONOMO [50%]; ECONOMISTA [15%]; INGENIERO EN MEDIOAMBIENTE | 152h | 7,260 |
| 45 | 1.4.4 | EVALUACION DE RIESGOS, SEGURIDAD Y SALUD DEL PROYECTO |  | 10d | 2014-01-21 | 2014-02-03 | 40 | 15d | 0d | DIRECTOR PROYECTO [25%]; INGENIERO AGRONOMO [50%]; ECONOMISTA [15%]; TECNICOS DE APOYO | 152h | 6,460 |
| 46 | 1.4.5 | Entrega Doc. nº 4. VIABILIDAD Y SOSTENIBLIDAD | milestone | 0d | 2014-02-03 | 2014-02-03 | 45 | 15d |  |  |  |  |
| 47 | 1.4.6 | Revisión Doc. nº 4 |  | 5d | 2014-02-04 | 2014-02-10 | 42, 43, 44 | 0d |  |  |  |  |
| 48 | 1.5 | **FASE 5: DOCUMENTACION** |  | 10d | 2014-02-11 | 2014-02-24 |  | 0d |  |  | 989.6h | 36,420 |
| 49 | 1.5.1 | MEMORIA |  | 6d | 2014-02-11 | 2014-02-18 | 47 | 4d |  | INGENIERO AGRONOMO [50%]; ECONOMISTA [25%]; DIRECTOR PROYECTO [10%]; TECNICOS DE APOYO | 88.8h | 3,660 |
| 50 | 1.5.2 | ANEJOS A LA MEMORIA |  | 10d | 2014-02-11 | 2014-02-24 | 47 | 0d |  | INGENIERO AGRONOMO [50%]; ECONOMISTA [25%]; DIRECTOR PROYECTO [10%]; INGENIERO EN MEDIOAMBIENTE [50%]; ADMINISTRATIVO [50%]; TECNICOS DE APOYO | 228h | 9,100 |
| 51 | 1.5.3 | PLANOS |  | 10d | 2014-02-11 | 2014-02-24 | 47 | 0d |  | INGENIERO AGRONOMO [50%]; ECONOMISTA [25%]; DIRECTOR PROYECTO [10%]; INGENIERO EN MEDIOAMBIENTE [50%]; ADMINISTRATIVO [50%]; TECNICOS DE APOYO; EXPERTO EN GIS | 308h | 9,100 |
| 52 | 1.5.4 | PLIEGO DE CONDICIONES |  | 3d | 2014-02-11 | 2014-02-13 | 47 | 7d |  | INGENIERO AGRONOMO [50%]; ECONOMISTA [25%]; DIRECTOR PROYECTO [10%]; INGENIERO EN MEDIOAMBIENTE [50%]; ADMINISTRATIVO [50%]; TECNICOS DE APOYO | 68.4h | 2,730 |
| 53 | 1.5.5 | PRESUPUESTO |  | 3d | 2014-02-11 | 2014-02-13 | 47 | 7d |  | ECONOMISTA [25%]; INGENIERO AGRONOMO [50%]; DIRECTOR PROYECTO [10%]; INGENIERO EN MEDIOAMBIENTE [50%]; ADMINISTRATIVO [50%]; TECNICOS DE APOYO | 68.4h | 2,730 |
| 54 | 1.5.6 | ESTUDIO DE SEGURIDAD Y SALUD |  | 10d | 2014-02-11 | 2014-02-24 | 47 | 0d |  | INGENIERO AGRONOMO [50%]; ECONOMISTA [25%]; DIRECTOR PROYECTO [10%]; INGENIERO EN MEDIOAMBIENTE [50%]; ADMINISTRATIVO [50%]; TECNICOS DE APOYO | 228h | 9,100 |
| 55 | 1.5.7 | Entrega del proyecto | milestone | 0d | 2014-02-24 | 2014-02-24 | 54, 49, 50, 51, 52, 53 | 0d |  |  |  |  |
